# Projet Brodeuse Numérique CNC

Schedule from GanttProject, 2026-09-28 to 2027-01-29.
Transformation et retrofit d une machine a coudre mecanique Janome Facility 21 en brodeuse numerique 2 axes XY

## Calendars

- Project calendar: Mon-Fri working; Sat-Sun off.

## Resources

| Resource |
| --- |
| RhomDev (Romaric Pradeau) |
| matazzo (Maé Tazzioli) |

## Schedule

| ID | WBS | Task | Duration | Start | Finish | Predecessors | Complete |
| --- | --- | --- | --- | --- | --- | --- | --- |
| 1 | 1 | **Phase 1 : Cadrage & Spécifications** | 9d | 2026-09-28 | 2026-10-08 |  | 100% |
| 2 | 1.1 | Prise en main du sujet & définition du besoin | 2d | 2026-09-28 | 2026-09-29 |  | 100% |
| 3 | 1.2 | Analyse de la machine Janome Facility 21 | 2d | 2026-09-30 | 2026-10-01 | 2 | 100% |
| 4 | 1.3 | Rédaction du Cahier des Charges fonctionnel | 3d | 2026-10-02 | 2026-10-06 | 3 | 100% |
| 5 | 1.4 | Déploiement coffre Obsidian & arborescence Git | 2d | 2026-10-07 | 2026-10-08 | 4 | 100% |
| 6 | 2 | **Phase 2 : Études Préliminaires & Choix Techniques** | 12d | 2026-10-07 | 2026-10-22 |  | 100% |
| 7 | 2.1 | Analyse de la carte MKS Base V1.4 (ATmega2560) | 3d | 2026-10-07 | 2026-10-09 | 4 | 100% |
| 8 | 2.2 | Étude du variateur AC RobotDyn (découpe de phase) | 4d | 2026-10-12 | 2026-10-15 | 7 | 100% |
| 9 | 2.3 | Étude théorique Fast PWM vs découpe AC | 2d | 2026-10-16 | 2026-10-19 | 8 | 100% |
| 10 | 2.4 | Étude initiale de la fourche optique H21A1 | 4d | 2026-10-07 | 2026-10-12 | 4 | 100% |
| 11 | 2.5 | Conception PCB comparateur AOP pour H21A1 | 5d | 2026-10-13 | 2026-10-19 | 10 | 100% |
| 12 | 2.6 | Essais comparateurs (LM318, TL081, LM393) | 3d | 2026-10-20 | 2026-10-22 | 11 | 100% |
| 13 | 3 | **Phase 3 : Expérimentation, Tests Manuels & Pivot** | 18d | 2026-10-02 | 2026-10-27 |  | 100% |
| 14 | 3.1 | Test manuel couture machine (carré piqué réussi) | 1d | 2026-10-02 | 2026-10-02 | 3 | 100% |
| 15 | 3.2 | Décision : Abandon H21A1 au profit du Fin de Course | 1d | 2026-10-23 | 2026-10-23 | 12, 14 | 100% |
| 16 | 3.3 | Choix du fin de course à galet (PMH & homing) | 1d | 2026-10-26 | 2026-10-26 | 15 | 100% |
| 17 | 3.4 | Établissement de la liste des besoins (BOM) | 1d | 2026-10-27 | 2026-10-27 | 16 | 100% |
| 18 | 4 | **Phase 4 : Conception Mécanique & Approvisionnement** | 22d | 2026-10-05 | 2026-11-03 |  |  |
| 19 | 4.1 | Commande des composants et fournitures (BOM) | 5d | 2026-10-28 | 2026-11-03 | 17 |  |
| 20 | 4.2 | Revoir le design CAO du plateau de travail XY | 5d | 2026-10-05 | 2026-10-09 | 14 |  |
| 21 | 4.3 | Conception came d arbre & support switch PMH à galet | 3d | 2026-10-27 | 2026-10-29 | 16 |  |
| 22 | 4.4 | Supports et butées fins de course plateau X/Y | 3d | 2026-10-12 | 2026-10-14 | 20 |  |
| 23 | 4.5 | Fabrication / assemblage nouveau plateau de travail | 4d | 2026-10-12 | 2026-10-15 | 20 |  |
| 24 | 5 | **Phase 5 : Électronique, Câblage & Puissance** | 19d | 2026-10-16 | 2026-11-11 |  |  |
| 25 | 5.1 | Réception & contrôle des composants commandés | 1d | 2026-11-04 | 2026-11-04 | 19 |  |
| 26 | 5.2 | Intégration sous boîtier sécurisé variateur AC 230V | 3d | 2026-11-05 | 2026-11-09 | 25 |  |
| 27 | 5.3 | Câblage moteurs pas-à-pas X/Y sur MKS Base | 2d | 2026-10-16 | 2026-10-19 | 23 |  |
| 28 | 5.4 | Câblage fins de course (Aiguille PMH, X-Min, Y-Min) | 2d | 2026-10-30 | 2026-11-02 | 21, 22 |  |
| 29 | 5.5 | Validation électrique globale sous tension (12V/230V) | 2d | 2026-11-10 | 2026-11-11 | 26, 27, 28 |  |

| ID | WBS | Task | Type | Duration | Start | Finish | Predecessors |
| --- | --- | --- | --- | --- | --- | --- | --- |
| 30 | 6 | **Phase 6 : Développement Firmware Arduino (C++)** |  | 18d | 2026-11-03 | 2026-11-26 |  |
| 31 | 6.1 | Routine interruption ZC & commande TRIAC AC |  | 4d | 2026-11-10 | 2026-11-13 | 26 |
| 32 | 6.2 | Séquence de Homing aiguille au PMH (galet) |  | 2d | 2026-11-03 | 2026-11-04 | 28 |
| 33 | 6.3 | Séquence de Homing axes plateau X/Y |  | 2d | 2026-11-03 | 2026-11-04 | 27, 28 |
| 34 | 6.4 | Machine à états synchronisation aiguille / avance XY |  | 5d | 2026-11-16 | 2026-11-20 | 31, 32, 33 |
| 35 | 6.5 | Interpréteur G-code & pilotage pas-à-pas (A4982) |  | 4d | 2026-11-23 | 2026-11-26 | 34 |
| 36 | 7 | **Phase 7 : Suite Logicielle Python Hôte** |  | 15d | 2026-10-12 | 2026-10-30 |  |
| 37 | 7.1 | Streamer USB série avec acquittement ok |  | 3d | 2026-10-12 | 2026-10-14 | 7 |
| 38 | 7.2 | Module vectorisation & extraction points SVG |  | 5d | 2026-10-15 | 2026-10-21 | 37 |
| 39 | 7.3 | Générateur de G-code spécialisé broderie |  | 4d | 2026-10-22 | 2026-10-27 | 38 |
| 40 | 7.4 | Visualiseur graphique 2D des trajectoires |  | 3d | 2026-10-28 | 2026-10-30 | 39 |
| 41 | 8 | **Phase 8 : Intégration Globale & Essais Avant Noël** |  | 12d | 2026-11-27 | 2026-12-14 |  |
| 42 | 8.1 | Essais à vide : mouvement cadre synchronisé sans fil |  | 3d | 2026-11-27 | 2026-12-01 | 35, 37 |
| 43 | 8.2 | Première broderie réelle : carré automatique |  | 3d | 2026-12-02 | 2026-12-04 | 39, 42 |
| 44 | 8.3 | Optimisation vitesse & réglage découpe de phase |  | 3d | 2026-12-07 | 2026-12-09 | 43 |
| 45 | 8.4 | Broderie d un motif complet avant Noël |  | 3d | 2026-12-10 | 2026-12-14 | 40, 44 |
| 46 | 9 | **Trêve Hivernale : Vacances de Noël (Activité Réduite)** |  | 10d | 2026-12-21 | 2027-01-01 |  |
| 47 | 9.1 | Pause de Noël & veille documentaire (peu de travail) |  | 10d | 2026-12-21 | 2027-01-01 |  |
| 48 | 10 | **Phase 9 : Finalisation, Rapport & Soutenance (Janvier)** |  | 19d | 2027-01-04 | 2027-01-28 |  |
| 49 | 10.1 | Rédaction intensive du rapport LaTeX (manuscrit) |  | 10d | 2027-01-04 | 2027-01-15 | 45, 47 |
| 50 | 10.2 | Diaporama soutenance & montage vidéo démo |  | 5d | 2027-01-18 | 2027-01-22 | 49 |
| 51 | 10.3 | Répétitions orales & réglage timing présentation |  | 4d | 2027-01-25 | 2027-01-28 | 50 |
| 52 | 10.4 | SOUTENANCE ORALE FINALE (DEADLINE 28 JANVIER) | milestone | 0d | 2027-01-29 | 2027-01-29 | 51 |
